# ASPEN

Schedule from MS Project, 2016-12-26 to 2017-02-21, status date 2016-12-30, A marks actual dates.

## Calendars

- Standard: Mon-Fri 08:00-12:00, 13:00-17:00; Sat-Sun off. Exceptions (off unless hours are given): 2017-01-26 (Republic Day).

## Resources

| Resource | Group |
| --- | --- |
| Sandeep T | PM |
| Madan T | Sr. Lead SDE - System |
| Shrutika M | Lead SDE - Dev |
| Pranay U | Sr. SDE - Dev |
| Jogesh N | SDE - Test |
| Aliyun Team |  |

## Schedule

| ID | WBS | Task | Type | Duration | Start | Finish | Predecessors | Complete | Remaining | Total slack | Free slack | Resources | Work | Actual work | Text1 |
| --- | --- | --- | --- | --- | --- | --- | --- | --- | --- | --- | --- | --- | --- | --- | --- |
| 1 | 1 | **Phase I - ECS** |  | 41d | 2016-12-26 A | 2017-02-21 |  | 11% | 36.44d | 0d |  |  | 1352h | 165.76h | <Project Code Name> |
| 2 | 1.1 | Project Start | milestone | 0d | 2016-12-26 A | 2016-12-26 A |  | 100% |  |  |  |  |  |  |  |
| 3 | 1.2 | Project Management, Scrum Handling, UAT Schedule, Weekly Status Report, Task Review and Project Closure Report |  | 240h | 2016-12-26 A | 2017-02-06 | 2 | 14% | 206.4h | 11d |  | Sandeep T | 240h | 33.6h |  |
| 4 | 1.3 | **Specification, Planning and Environment** |  | 5d | 2016-12-26 A | 2016-12-30 |  | 99% | 0d | 24d |  |  | 88h | 88h |  |
| 5 | 1.3.1 | **Planning** |  | 0d | 2016-12-26 A | 2016-12-26 A |  | 100% |  |  |  |  |  |  |  |
| 6 | 1.3.1.1 | Phase 1 Project Planning | milestone | 0h | 2016-12-26 A | 2016-12-26 A | 2 | 100% |  |  |  | Aliyun Team |  |  |  |
| 7 | 1.3.2 | **Functional Specification Document** |  | 5d | 2016-12-26 A | 2016-12-30 |  | 99% | 0d | 24d |  |  | 80h | 80h |  |
| 8 | 1.3.2.1 | Create Functional Specification |  | 32h | 2016-12-26 A | 2016-12-29 A | 2 | 100% |  |  |  | Pranay U; Shrutika M | 64h | 64h |  |
| 9 | 1.3.2.2 | FSD Review and Update |  | 8h | 2016-12-30 A | 2016-12-30 A | 8 | 100% |  |  |  | Pranay U; Shrutika M | 16h | 16h |  |
| 10 | 1.3.2.3 | Functional Specification Document (FSD) and Approval | milestone | 0h | 2016-12-30 | 2016-12-30 | 9 |  |  | 25d | 0d |  |  |  |  |
| 11 | 1.3.3 | Local Dev + Test Environment Readiness |  | 1d | 2016-12-26 A | 2016-12-26 A | 2 | 100% |  |  |  | Madan T | 8h | 8h |  |
| 12 | 1.4 | **Test Plan Ready** |  | 3d | 2016-12-26 A | 2016-12-28 A |  | 100% |  |  |  |  | 24h | 24h |  |
| 13 | 1.4.1 | Test Plan Creation |  | 24h | 2016-12-26 A | 2016-12-28 A | 2 | 100% |  |  |  | Jogesh N | 24h | 24h |  |
| 14 | 1.4.2 | Test Plan Ready | milestone | 0h | 2016-12-28 A | 2016-12-28 A | 13 | 100% |  |  |  |  |  |  |  |
| 15 | 1.5 | **Execute** |  | 29d | 2016-12-29 A | 2017-02-08 |  | 2% | 28.51d | 9d |  |  | 712h | 20.16h |  |
| 16 | 1.5.1 | **Drop 1 Instance Related Interface** |  | 14d | 2016-12-29 A | 2017-01-17 |  | 4% | 13.48d | 24d |  |  | 336h | 20.16h |  |
| 17 | 1.5.1.1 | Drop 1 Test Cases Creation |  | 48h | 2016-12-29 A | 2017-01-05 | 14 | 21% | 37.92h | 0d |  | Jogesh N; Madan T | 96h | 20.16h |  |
| 18 | 1.5.1.2 | **Implementation** |  | 9d | 2017-01-02 | 2017-01-12 |  |  |  | 17d |  |  | 128h |  |  |
| 19 | 1.5.1.2.1 | Coding and Unit Testing Modifying Instance Attributes |  | 32h | 2017-01-02 | 2017-01-05 | 10 |  |  | 16d | 0d | Shrutika M | 32h |  |  |
| 20 | 1.5.1.2.2 | Coding and Unit Testing Querying Instance Status |  | 24h | 2017-01-06 | 2017-01-10 | 19 |  |  | 8d | 0d | Shrutika M | 24h |  |  |
| 21 | 1.5.1.2.3 | Coding and Unit Testing Adding an Instance to a Security Group |  | 32h | 2017-01-02 | 2017-01-05 | 10 |  |  | 9d | 0d | Pranay U | 32h |  |  |
| 22 | 1.5.1.2.4 | Coding and Unit Testing Removing an Instance from a Security Group |  | 40h | 2017-01-06 | 2017-01-12 | 21 |  |  | 16d | 0d | Pranay U | 40h |  |  |
| 23 | 1.5.1.3 | **Testing, Bug fixing and stabalization** |  | 8d | 2017-01-06 | 2017-01-17 |  |  |  | 0d |  |  | 96h |  |  |
| 24 | 1.5.1.3.1 | Creating Playbooks and testing Drop 1 Interface |  | 64h | 2017-01-06 | 2017-01-17 | 17 |  |  | 0d |  | Jogesh N | 64h |  |  |
| 25 | 1.5.1.3.2 | Drop 1 Bug fixing and stabalization |  | 16h | 2017-01-16 | 2017-01-17 | 24FF |  |  | 3d |  | Pranay U; Shrutika M | 32h |  |  |
| 26 | 1.5.1.4 | Create help document |  | 16h | 2017-01-11 | 2017-01-12 | 20 |  |  | 8d | 0d | Shrutika M | 16h |  |  |
| 27 | 1.5.1.5 | Drop 1 Close | milestone | 0h | 2017-01-17 | 2017-01-17 | 24 |  |  | 13d |  |  |  |  |  |

| ID | WBS | Task | Type | Duration | Start | Finish | Predecessors | Total slack | Free slack | Resources | Work |
| --- | --- | --- | --- | --- | --- | --- | --- | --- | --- | --- | --- |
| 28 | 1.5.2 | **Drop 2 Disk Related Interfaces** |  | 13d | 2017-01-13 | 2017-02-01 |  | 3d |  |  | 248h |
| 29 | 1.5.2.1 | Drop 2 Test Cases Creation |  | 40h | 2017-01-18 | 2017-01-24 | 24 | 0d |  | Jogesh N | 40h |
| 30 | 1.5.2.2 | **Implementation** |  | 10d | 2017-01-13 | 2017-01-27 |  | 17d |  |  | 128h |
| 31 | 1.5.2.2.1 | Coding and Unit Testing Creating a Disk |  | 40h | 2017-01-13 | 2017-01-23 | 22 | 9d | 0d | Pranay U | 40h |
| 32 | 1.5.2.2.2 | Coding and Unit Testing Attaching a Disk |  | 24h | 2017-01-24 | 2017-01-27 | 31 | 6d |  | Pranay U | 24h |
| 33 | 1.5.2.2.3 | Coding and Unit Testing Detaching a Disk |  | 32h | 2017-01-13 | 2017-01-20 | 26 | 10d | 0d | Shrutika M | 32h |
| 34 | 1.5.2.2.4 | Coding and Unit Testing Deleting a Disk |  | 32h | 2017-01-23 | 2017-01-27 | 33 | 6d |  | Shrutika M | 32h |
| 35 | 1.5.2.3 | **Testing, Bug fixing and stabalization** |  | 4d | 2017-01-25 | 2017-01-31 |  | 0d |  |  | 64h |
| 36 | 1.5.2.3.1 | Creating Playbooks and testing Drop 2 Interface |  | 32h | 2017-01-25 | 2017-01-31 | 29 | 0d |  | Jogesh N | 32h |
| 37 | 1.5.2.3.2 | Drop 2 Bug fixing and stabalization |  | 16h | 2017-01-30 | 2017-01-31 | 36FF | 1d | 0d | Pranay U; Shrutika M | 32h |
| 38 | 1.5.2.4 | Create help document |  | 8h | 2017-02-01 | 2017-02-01 | 37 | 1d | 0d | Pranay U; Shrutika M | 16h |
| 39 | 1.5.2.5 | Drop 2 Close | milestone | 0h | 2017-02-01 | 2017-02-01 | 38 | 3d |  |  |  |
| 40 | 1.5.3 | **Drop 3 Image Related Interfaces** |  | 6d | 2017-02-01 | 2017-02-08 |  | 0d |  |  | 128h |
| 41 | 1.5.3.1 | Drop 3 Test Cases Creation |  | 16h | 2017-02-01 | 2017-02-02 | 36 | 0d |  | Jogesh N | 16h |
| 42 | 1.5.3.2 | **Implementation** |  | 2d | 2017-02-02 | 2017-02-03 |  | 11d |  |  | 32h |
| 43 | 1.5.3.2.1 | Coding and Unit Testing Creating a User-defined Image |  | 16h | 2017-02-02 | 2017-02-03 | 38 | 2d | 0d | Pranay U | 16h |
| 44 | 1.5.3.2.2 | Coding and Unit Testing Deleting a User-defined Image |  | 16h | 2017-02-02 | 2017-02-03 | 38 | 4d |  | Shrutika M | 16h |
| 45 | 1.5.3.3 | **Testing, Bug fixing and stabalization** |  | 4d | 2017-02-03 | 2017-02-08 |  | 0d |  |  | 64h |
| 46 | 1.5.3.3.1 | Creating Playbooks and testing Drop 3 Interface |  | 32h | 2017-02-03 | 2017-02-08 | 41 | 0d |  | Jogesh N | 32h |
| 47 | 1.5.3.3.2 | Drop 3 Bug fixing and stabalization |  | 16h | 2017-02-07 | 2017-02-08 | 46FF | 9d |  | Pranay U; Shrutika M | 32h |
| 48 | 1.5.3.4 | Create help document |  | 8h | 2017-02-06 | 2017-02-06 | 43 | 2d |  | Pranay U; Shrutika M | 16h |
| 49 | 1.5.3.5 | Drop 3 Close | milestone | 0h | 2017-02-08 | 2017-02-08 | 46 | 0d |  |  |  |
| 50 | 1.6 | **Close** |  | 9d | 2017-02-09 | 2017-02-21 |  | 0d |  |  | 288h |
| 51 | 1.6.1 | Merge Code into GitHub |  | 4h | 2017-02-09 | 2017-02-09 | 49 | 0d |  | Shrutika M | 4h |
| 52 | 1.6.2 | Smoke Run GitHub Code Source Code |  | 4h | 2017-02-09 | 2017-02-09 | 51 | 0d |  | Jogesh N | 4h |
| 53 | 1.6.3 | ECS module Release | milestone | 0h | 2017-02-09 | 2017-02-09 | 52 | 0d |  |  |  |
| 54 | 1.6.4 | ECS UAT with AliCloud Team |  | 32h | 2017-02-10 | 2017-02-15 | 53 | 0d |  | Aliyun Team; Jogesh N; Pranay U; Shrutika M | 128h |
| 55 | 1.6.5 | User Guide + Deployment Guide |  | 56h | 2017-02-10 | 2017-02-20 | 53 | 1d |  | Madan T | 56h |
| 56 | 1.6.6 | UAT Fixing, testing and post release support |  | 32h | 2017-02-16 | 2017-02-21 | 54 | 0d |  | Jogesh N; Pranay U; Shrutika M | 96h |
| 57 | 1.6.7 | Delivering User Guide, UAT fixing and final sign-off | milestone | 0h | 2017-02-21 | 2017-02-21 | 56 | 0d |  |  |  |
