# ASPEN

Schedule from MS Project, 2016-12-26 to 2017-05-05, A marks actual dates.

## Calendars

- Standard: Mon-Fri 08:00-12:00, 13:00-17:00; Sat-Sun off.

## Resources

| Resource |
| --- |
| Sandeep T |
| Harshal W |
| Nandkumar |
| Prasanna J |
| Sneha C |
| Gaurav D |
| Sachin J |
| Trupti G |
| Aliyun Team |

## Schedule

| ID | WBS | Task | Type | Duration | Start | Finish | Predecessors | Complete | Remaining | Total slack | Free slack | Resources | Work | Actual work |
| --- | --- | --- | --- | --- | --- | --- | --- | --- | --- | --- | --- | --- | --- | --- |
| 1 | 1 | **Phase II - ECS-Security Group, SLB, VPC, OSS, RDS** |  | 95d | 2016-12-26 A | 2017-05-05 |  | 5% | 90.34d | 0d |  |  | 4040h | 220.96h |
| 2 | 1.1 | Start | milestone | 0h | 2016-12-26 A | 2016-12-26 A |  | 100% |  |  |  |  |  |  |
| 3 | 1.2 | Project Management, Scrum Handling, UAT Schedule, Weekly Status Report, Task Review and Project Closure Report |  | 576h | 2016-12-26 A | 2017-04-05 |  | 6% | 541.44h | 22d |  | Sandeep T | 576h | 34.56h |
| 4 | 1.3 | **Requirement Gathering, Specification, Planning and Environment** |  | 10d | 2016-12-26 A | 2017-01-06 |  | 64% | 3.59d | 0d |  |  | 168h | 122h |
| 5 | 1.3.1 | **Requirement Gathering and Analysis** |  | 5d | 2016-12-26 A | 2016-12-30 A |  | 100% |  |  |  |  | 112h | 112h |
| 6 | 1.3.1.1 | Requirement Gathering |  | 40h | 2016-12-26 A | 2016-12-30 A | 2 | 100% |  |  |  | Gaurav D; Trupti G | 80h | 80h |
| 7 | 1.3.1.2 | Analysis on requirement |  | 32h | 2016-12-26 A | 2016-12-29 A | 2 | 100% |  |  |  | Prasanna J | 32h | 32h |
| 8 | 1.3.2 | **Planning** |  | 0d | 2016-12-26 A | 2016-12-26 A |  | 100% |  |  |  |  |  |  |
| 9 | 1.3.2.1 | Phase 2 Project Planning | milestone | 0h | 2016-12-26 A | 2016-12-26 A | 2 | 100% |  |  |  |  |  |  |
| 10 | 1.3.3 | **Functional Specification Document** |  | 6d | 2016-12-30 A | 2017-01-06 |  | 4% | 5.75d | 0d |  |  | 48h | 2h |
| 11 | 1.3.3.1 | Create Functional Specification |  | 40h | 2016-12-30 A | 2017-01-05 | 7 | 5% | 38h | 0d |  | Harshal W | 40h | 2h |
| 12 | 1.3.3.2 | FSD Review and Update |  | 8h | 2017-01-06 | 2017-01-06 | 11 |  |  | 0d |  | Harshal W | 8h |  |
| 13 | 1.3.3.3 | Functional Specification Document and Approval | milestone | 0h | 2017-01-06 | 2017-01-06 | 12 |  |  | 0d |  |  |  |  |
| 14 | 1.3.4 | Environment Readiness |  | 1d | 2016-12-26 A | 2016-12-26 A | 2 | 100% |  |  |  | Nandkumar | 8h | 8h |
| 15 | 1.4 | **Test Plan Ready** |  | 3d | 2016-12-26 A | 2016-12-28 A |  | 100% |  |  |  |  | 48h | 48h |
| 16 | 1.4.1 | Test Plan Creation |  | 24h | 2016-12-26 A | 2016-12-28 A | 2 | 100% |  |  |  | Sachin J; Sneha C | 48h | 48h |
| 17 | 1.4.2 | Test Plan Ready | milestone | 0h | 2016-12-28 A | 2016-12-28 A | 16 | 100% |  |  |  |  |  |  |
| 18 | 1.5 | **Execute** |  | 86d | 2016-12-29 A | 2017-04-27 |  | 1% | 85.41d | 6d |  |  | 3160h | 16.4h |
| 19 | 1.5.1 | **Milestone 1 – ECS Security Group, SLB, VPC module Release** |  | 47d | 2016-12-29 A | 2017-03-03 |  | 1% | 46.42d | 45d |  |  | 1952h | 16.4h |
| 20 | 1.5.1.1 | **Security Group Related Interfaces** |  | 12d | 2016-12-29 A | 2017-01-13 |  | 6% | 11.26d | 80d |  |  | 144h | 8.4h |
| 21 | 1.5.1.1.1 | Drop 1 Test Cases Creation |  | 24h | 2016-12-29 A | 2017-01-02 | 17 | 35% | 15.6h | 89d |  | Nandkumar | 24h | 8.4h |
| 22 | 1.5.1.1.2 | **Implementation** |  | 3d | 2017-01-09 | 2017-01-11 |  |  |  | 1d |  |  | 64h |  |
| 23 | 1.5.1.1.2.1 | Coding and Unit Testing Creating a Security Group |  | 24h | 2017-01-09 | 2017-01-11 | 13 |  |  | 1d | 0d | Trupti G | 24h |  |
| 24 | 1.5.1.1.2.2 | Coding and Unit Testing Querying the Security Group List |  | 24h | 2017-01-09 | 2017-01-11 | 13 |  |  | 82d |  | Harshal W | 24h |  |
| 25 | 1.5.1.1.2.3 | Coding and Unit Testing Deleting a Security Group |  | 16h | 2017-01-09 | 2017-01-10 | 13 |  |  | 2d | 0d | Gaurav D | 16h |  |

| ID | WBS | Task | Type | Duration | Start | Finish | Predecessors | Complete | Remaining | Total slack | Free slack | Resources | Work | Actual work |
| --- | --- | --- | --- | --- | --- | --- | --- | --- | --- | --- | --- | --- | --- | --- |
| 26 | 1.5.1.1.3 | **Testing, Bug fixing and stabalization** |  | 2d | 2017-01-11 | 2017-01-12 |  |  |  | 1d |  |  | 32h |  |
| 27 | 1.5.1.1.3.1 | Creating Playbooks and testing Drop 1 Interface |  | 16h | 2017-01-11 | 2017-01-12 | 23FF+8h |  |  | 1d | 0d | Sachin J | 16h |  |
| 28 | 1.5.1.1.3.2 | Drop 1 Bug fixing and stabalization |  | 8h | 2017-01-12 | 2017-01-12 | 27FF |  |  | 1d | 0d | Harshal W; Trupti G | 16h |  |
| 29 | 1.5.1.1.4 | Create help document |  | 24h | 2017-01-11 | 2017-01-13 | 25 |  |  | 2d | 0d | Gaurav D | 24h |  |
| 30 | 1.5.1.1.5 | ECS Security Group Related Interfaces Close | milestone | 0h | 2017-01-12 | 2017-01-12 | 27 |  |  | 30d |  |  |  |  |
| 31 | 1.5.1.2 | **Virtual Private Cloud** |  | 32d | 2016-12-29 A | 2017-02-10 |  | 1% | 31.52d | 60d |  |  | 720h | 8h |
| 32 | 1.5.1.2.1 | **Drop 2 - VPC and Vswitch Interfaces** |  | 20d | 2016-12-29 A | 2017-01-25 |  | 4% | 19.29d | 72d |  |  | 264h | 8h |
| 33 | 1.5.1.2.1.1 | Drop 2 Test Cases Creation |  | 40h | 2016-12-29 A | 2017-01-04 | 17 | 20% | 32h | 87d |  | Sneha C | 40h | 8h |
| 34 | 1.5.1.2.1.2 | **Implementation** |  | 10d | 2017-01-09 | 2017-01-20 |  |  |  | 0d |  |  | 144h |  |
| 35 | 1.5.1.2.1.2.1 | Coding and Unit Testing Creating a VPC |  | 32h | 2017-01-09 | 2017-01-12 | 13 |  |  | 0d |  | Prasanna J | 32h |  |
| 36 | 1.5.1.2.1.2.2 | Coding and Unit Testing Deleting a VPC |  | 24h | 2017-01-16 | 2017-01-18 | 29 |  |  | 2d | 0d | Gaurav D | 24h |  |
| 37 | 1.5.1.2.1.2.3 | Coding and Unit Testing Creating a VSwitch |  | 32h | 2017-01-13 | 2017-01-18 | 35 |  |  | 0d |  | Prasanna J | 32h |  |
| 38 | 1.5.1.2.1.2.4 | Coding and Unit Testing Deleting a VSwitch |  | 24h | 2017-01-13 | 2017-01-17 | 28 |  |  | 3d |  | Trupti G | 24h |  |
| 39 | 1.5.1.2.1.2.5 | Coding and Unit Testing Querying the VSwitch list |  | 16h | 2017-01-19 | 2017-01-20 | 37 |  |  | 0d |  | Prasanna J; Trupti G | 32h |  |
| 40 | 1.5.1.2.1.3 | **Testing, Bug fixing and stabalization** |  | 4d | 2017-01-20 | 2017-01-25 |  |  |  | 0d |  |  | 80h |  |
| 41 | 1.5.1.2.1.3.1 | Creating Playbooks and testing Drop 2 Interface |  | 32h | 2017-01-20 | 2017-01-25 | 34FF+24h |  |  | 0d |  | Sneha C | 32h |  |
| 42 | 1.5.1.2.1.3.2 | Drop 2 Bug fixing and stabalization |  | 24h | 2017-01-23 | 2017-01-25 | 41FF |  |  | 0d |  | Prasanna J; Trupti G | 48h |  |
| 43 | 1.5.1.2.2 | **Drop 3 - Vrouter, RouteEntry and Network related interfaces** |  | 17d | 2017-01-19 | 2017-02-10 |  |  |  | 3d |  |  | 424h |  |
| 44 | 1.5.1.2.2.1 | Drop 3 Test Cases Creation |  | 40h | 2017-01-26 | 2017-02-01 | 41 |  |  | 67d |  | Sneha C; Nandkumar | 80h |  |
| 45 | 1.5.1.2.2.2 | **Implementation** |  | 14d | 2017-01-19 | 2017-02-07 |  |  |  | 0d |  |  | 232h |  |
| 46 | 1.5.1.2.2.2.1 | Coding and Unit Testing Querying the VRouter list |  | 32h | 2017-01-19 | 2017-01-24 | 36 |  |  | 3d | 0d | Gaurav D | 32h |  |
| 47 | 1.5.1.2.2.2.2 | Coding and Unit Testing Creating a custom route |  | 32h | 2017-01-26 | 2017-01-31 | 42 |  |  | 5d |  | Prasanna J | 32h |  |
| 48 | 1.5.1.2.2.2.3 | Coding and Unit Testing Deleting a custom route |  | 16h | 2017-01-25 | 2017-01-26 | 46 |  |  | 3d | 0d | Gaurav D | 16h |  |
| 49 | 1.5.1.2.2.2.4 | Coding and Unit Testing Requesting EIPs |  | 32h | 2017-01-26 | 2017-01-31 | 42 |  |  | 0d |  | Trupti G | 32h |  |
| 50 | 1.5.1.2.2.2.5 | Coding and Unit Testing Binding EIPs |  | 16h | 2017-02-01 | 2017-02-02 | 49 |  |  | 0d |  | Trupti G; Prasanna J | 32h |  |
| 51 | 1.5.1.2.2.2.6 | Coding and Unit Testing Modifying EIP attributes |  | 24h | 2017-02-03 | 2017-02-07 | 50 |  |  | 0d |  | Prasanna J; Trupti G | 48h |  |
| 52 | 1.5.1.2.2.2.7 | Coding and Unit Testing Unbinding EIPs |  | 24h | 2017-01-27 | 2017-01-31 | 48 |  |  | 3d | 0d | Gaurav D | 24h |  |
| 53 | 1.5.1.2.2.2.8 | Coding and Unit Testing Releasing EIPs |  | 16h | 2017-02-01 | 2017-02-02 | 52 |  |  | 3d | 0d | Gaurav D | 16h |  |

| ID | WBS | Task | Type | Duration | Start | Finish | Predecessors | Total slack | Free slack | Resources | Work |
| --- | --- | --- | --- | --- | --- | --- | --- | --- | --- | --- | --- |
| 54 | 1.5.1.2.2.3 | **Testing, Bug fixing and stabalization** |  | 5d | 2017-02-06 | 2017-02-10 |  | 0d |  |  | 112h |
| 55 | 1.5.1.2.2.3.1 | Creating Playbooks and testing Drop 3 Interface |  | 40h | 2017-02-06 | 2017-02-10 | 45FF+24h | 0d |  | Sneha C | 40h |
| 56 | 1.5.1.2.2.3.2 | Drop 3 Bug fixing and stabalization |  | 24h | 2017-02-08 | 2017-02-10 | 55FF | 0d |  | Prasanna J; Trupti G; Gaurav D | 72h |
| 57 | 1.5.1.2.3 | Create help document |  | 16h | 2017-02-03 | 2017-02-06 | 53 | 64d |  | Gaurav D; Nandkumar | 32h |
| 58 | 1.5.1.2.4 | Drop Virtual Private Cloud Close | milestone | 0h | 2017-02-10 | 2017-02-10 | 55 | 9d |  |  |  |
| 59 | 1.5.1.3 | **Server Load Balancer Interfaces** |  | 30d | 2017-01-13 | 2017-02-23 |  | 1d |  |  | 704h |
| 60 | 1.5.1.3.1 | **Drop 4 - Load Balancer** |  | 20d | 2017-01-13 | 2017-02-09 |  | 1d |  |  | 256h |
| 61 | 1.5.1.3.1.1 | Drop 4 Test Cases Creation |  | 32h | 2017-01-13 | 2017-01-18 | 27 | 77d |  | Sachin J; Nandkumar | 64h |
| 62 | 1.5.1.3.1.2 | **Implementation** |  | 18d | 2017-01-13 | 2017-02-07 |  | 1d |  |  | 144h |
| 63 | 1.5.1.3.1.2.1 | Coding and Unit Testing Create Load Balancer |  | 40h | 2017-01-13 | 2017-01-19 | 28 | 1d | 0d | Harshal W | 40h |
| 64 | 1.5.1.3.1.2.2 | Coding and Unit Testing Modify Load balancer Internet Spec |  | 32h | 2017-01-20 | 2017-01-25 | 63 | 1d | 0d | Harshal W | 32h |
| 65 | 1.5.1.3.1.2.3 | Coding and Unit Testing Delete Load Balancer |  | 24h | 2017-01-26 | 2017-01-30 | 64 | 1d | 0d | Harshal W | 24h |
| 66 | 1.5.1.3.1.2.4 | Coding and Unit Testing Set Load Balancer Status (Enable/Disable) |  | 24h | 2017-01-31 | 2017-02-02 | 65 | 1d | 0d | Harshal W | 24h |
| 67 | 1.5.1.3.1.2.5 | Coding and Unit Testing Set Load Balancer Name (Alias) |  | 24h | 2017-02-03 | 2017-02-07 | 66 | 1d | 0d | Harshal W | 24h |
| 68 | 1.5.1.3.1.3 | **Testing, Bug fixing and stabalization** |  | 4d | 2017-02-06 | 2017-02-09 |  | 1d |  |  | 48h |
| 69 | 1.5.1.3.1.3.1 | Creating Playbooks and testing Drop 4 Interface |  | 32h | 2017-02-06 | 2017-02-09 | 67FF+16h | 1d | 0d | Sachin J | 32h |
| 70 | 1.5.1.3.1.3.2 | Drop 4 Bug fixing and stabalization |  | 16h | 2017-02-08 | 2017-02-09 | 69FF | 1d | 0d | Harshal W | 16h |
| 71 | 1.5.1.3.2 | **Drop 5 - Backend Server** |  | 10d | 2017-02-10 | 2017-02-23 |  | 1d |  |  | 192h |
| 72 | 1.5.1.3.2.1 | Drop 5 Test Cases Creation |  | 32h | 2017-02-10 | 2017-02-15 | 69 | 57d |  | Sachin J; Nandkumar | 64h |
| 73 | 1.5.1.3.2.2 | **Implementation** |  | 6d | 2017-02-10 | 2017-02-17 |  | 0d |  |  | 80h |
| 74 | 1.5.1.3.2.2.1 | Coding and Unit Testing Add backend Server |  | 24h | 2017-02-10 | 2017-02-14 | 70 | 1d | 0d | Harshal W | 24h |
| 75 | 1.5.1.3.2.2.2 | Coding and Unit Testing Remove backend Server |  | 16h | 2017-02-15 | 2017-02-16 | 74 | 1d | 0d | Harshal W | 16h |
| 76 | 1.5.1.3.2.2.3 | Coding and Unit Testing Set Backend server |  | 24h | 2017-02-13 | 2017-02-15 | 56 | 0d |  | Trupti G | 24h |
| 77 | 1.5.1.3.2.2.4 | Coding and Unit Testing Describe Health status of backend server |  | 16h | 2017-02-16 | 2017-02-17 | 76 | 0d |  | Trupti G | 16h |

| ID | WBS | Task | Type | Duration | Start | Finish | Predecessors | Total slack | Free slack | Resources | Work |
| --- | --- | --- | --- | --- | --- | --- | --- | --- | --- | --- | --- |
| 78 | 1.5.1.3.2.3 | **Testing, Bug fixing and stabalization** |  | 4d | 2017-02-20 | 2017-02-23 |  | 51d |  |  | 48h |
| 79 | 1.5.1.3.2.3.1 | Creating Playbooks and testing Drop 5 Interface |  | 32h | 2017-02-20 | 2017-02-23 | 73 | 51d | 0d | Sachin J | 32h |
| 80 | 1.5.1.3.2.3.2 | Drop 5 Bug fixing and stabalization |  | 8h | 2017-02-23 | 2017-02-23 | 79FF | 51d |  | Harshal W; Trupti G | 16h |
| 81 | 1.5.1.3.3 | **Drop 6 - VServer Group** |  | 9d | 2017-02-13 | 2017-02-23 |  | 1d |  |  | 232h |
| 82 | 1.5.1.3.3.1 | Drop 6 Test Cases Creation |  | 32h | 2017-02-13 | 2017-02-16 | 55 | 53d | 0d | Sneha C | 32h |
| 83 | 1.5.1.3.3.2 | **Implementation** |  | 7d | 2017-02-13 | 2017-02-21 |  | 0d |  |  | 128h |
| 84 | 1.5.1.3.3.2.1 | Coding and Unit Testing Create VServer Group |  | 24h | 2017-02-13 | 2017-02-15 | 56 | 1d | 0d | Gaurav D | 24h |
| 85 | 1.5.1.3.3.2.2 | Coding and Unit Testing Set VServer Group Attribute |  | 24h | 2017-02-13 | 2017-02-15 | 56 | 1d | 0d | Prasanna J | 24h |
| 86 | 1.5.1.3.3.2.3 | Coding and Unit Testing Add VServer Group Backend Servers |  | 24h | 2017-02-16 | 2017-02-20 | 84 | 1d |  | Gaurav D | 24h |
| 87 | 1.5.1.3.3.2.4 | Coding and Unit Testing Remove VServer Group Backend Servers |  | 24h | 2017-02-16 | 2017-02-20 | 85 | 1d |  | Prasanna J | 24h |
| 88 | 1.5.1.3.3.2.5 | Coding and Unit Testing Modify VServer Group Backend Servers |  | 16h | 2017-02-20 | 2017-02-21 | 77 | 0d |  | Trupti G | 16h |
| 89 | 1.5.1.3.3.2.6 | Coding and Unit Testing Delete VServer Group |  | 16h | 2017-02-17 | 2017-02-20 | 75 | 1d |  | Harshal W | 16h |
| 90 | 1.5.1.3.3.3 | **Testing, Bug fixing and stabalization** |  | 5d | 2017-02-17 | 2017-02-23 |  | 0d |  |  | 72h |
| 91 | 1.5.1.3.3.3.1 | Creating Playbooks and testing Drop 6 Interface |  | 40h | 2017-02-17 | 2017-02-23 | 83FF+16h | 0d |  | Sneha C | 40h |
| 92 | 1.5.1.3.3.3.2 | Drop 6 Bug fixing and stabalization |  | 16h | 2017-02-22 | 2017-02-23 | 91FF | 51d |  | Gaurav D; Prasanna J | 32h |
| 93 | 1.5.1.3.4 | Create help document |  | 24h | 2017-02-17 | 2017-02-21 | 82 | 53d |  | Nandkumar | 24h |
| 94 | 1.5.1.3.5 | Drop Server Load Balancer Interfaces Close | milestone | 0h | 2017-02-23 | 2017-02-23 | 91 | 0d |  |  |  |
| 95 | 1.5.1.4 | Milestone 1 – ECS Security Group, SLB, VPC module Release | milestone | 0h | 2017-02-23 | 2017-02-23 | 30, 58, 94 | 0d |  |  |  |
| 96 | 1.5.1.5 | UAT Security Group, SLB, VPC module |  | 48h | 2017-02-24 | 2017-03-03 | 95 | 0d |  | Aliyun Team; Gaurav D; Harshal W; Nandkumar; Prasanna J; Sachin J; Sneha C; Trupti G | 384h |
| 97 | 1.5.2 | **Milestone 2 – OSS, RDS module Release** |  | 39d | 2017-03-06 | 2017-04-27 |  | 0d |  |  | 1208h |
| 98 | 1.5.2.1 | **Drop 7 Object Storage Service Related Interfaces** |  | 12d | 2017-03-06 | 2017-03-21 |  | 0d |  |  | 272h |
| 99 | 1.5.2.1.1 | Drop 7 Test Cases Creation |  | 40h | 2017-03-06 | 2017-03-10 | 96 | 40d |  | Sneha C | 40h |
| 100 | 1.5.2.1.2 | **Implementation** |  | 9d | 2017-03-06 | 2017-03-16 |  | 0d |  |  | 144h |
| 101 | 1.5.2.1.2.1 | Coding and Unit Testing Create Buckets |  | 40h | 2017-03-06 | 2017-03-10 | 96 | 0d |  | Harshal W | 40h |
| 102 | 1.5.2.1.2.2 | Coding and Unit Testing Delete Bucket |  | 24h | 2017-03-13 | 2017-03-15 | 101 | 0d |  | Harshal W | 24h |
| 103 | 1.5.2.1.2.3 | Coding and Unit Testing Simple Upload |  | 8h | 2017-03-16 | 2017-03-16 | 102 | 0d |  | Harshal W; Trupti G | 16h |
| 104 | 1.5.2.1.2.4 | Coding and Unit Testing Create Folders |  | 24h | 2017-03-06 | 2017-03-08 | 96 | 1d | 0d | Trupti G | 24h |
| 105 | 1.5.2.1.2.5 | Coding and Unit Testing Deleting Objects |  | 40h | 2017-03-09 | 2017-03-15 | 104 | 1d |  | Trupti G | 40h |

| ID | WBS | Task | Type | Duration | Start | Finish | Predecessors | Total slack | Free slack | Resources | Work |
| --- | --- | --- | --- | --- | --- | --- | --- | --- | --- | --- | --- |
| 106 | 1.5.2.1.3 | **Testing, Bug fixing and stabalization** |  | 5d | 2017-03-15 | 2017-03-21 |  | 0d |  |  | 64h |
| 107 | 1.5.2.1.3.1 | Creating Playbooks and testing Drop 7 Interface |  | 40h | 2017-03-15 | 2017-03-21 | 100FF+24h | 0d |  | Sneha C | 40h |
| 108 | 1.5.2.1.3.2 | Drop 7 Bug fixing and stabalization |  | 24h | 2017-03-17 | 2017-03-21 | 107FF | 33d |  | Harshal W | 24h |
| 109 | 1.5.2.1.4 | Create help document |  | 24h | 2017-03-17 | 2017-03-21 | 107FF | 0d |  | Trupti G | 24h |
| 110 | 1.5.2.1.5 | Drop 7 Close | milestone | 0h | 2017-03-21 | 2017-03-21 | 109 | 0d |  |  |  |
| 111 | 1.5.2.2 | **Relational Database Service Related Interfaces** |  | 34d | 2017-03-06 | 2017-04-20 |  | 0d |  |  | 896h |
| 112 | 1.5.2.2.1 | **Drop 8 RDS instance management** |  | 19d | 2017-03-22 | 2017-04-17 |  | 0d |  |  | 352h |
| 113 | 1.5.2.2.1.1 | RDS instance management Test Cases Creation |  | 1d | 2017-03-22 | 2017-03-22 | 110 | 18d |  | Sneha C | 8h |
| 114 | 1.5.2.2.1.2 | **Implementation** |  | 15d | 2017-03-22 | 2017-04-11 |  | 0d |  |  | 240h |
| 115 | 1.5.2.2.1.2.1 | Coding and Unit Testing Creating an RDS instance |  | 32h | 2017-03-22 | 2017-03-27 | 110 | 5d | 0d | Harshal W | 32h |
| 116 | 1.5.2.2.1.2.2 | Coding and Unit Testing Releasing an RDS instance |  | 24h | 2017-03-28 | 2017-03-30 | 115 | 5d | 0d | Harshal W | 24h |
| 117 | 1.5.2.2.1.2.3 | Coding and Unit Testing Restarting an RDS instance |  | 24h | 2017-03-22 | 2017-03-24 | 110 | 0d |  | Trupti G | 24h |
| 118 | 1.5.2.2.1.2.4 | Coding and Unit Testing Changing the RDS instance type |  | 24h | 2017-03-31 | 2017-04-04 | 116 | 5d |  | Harshal W | 24h |
| 119 | 1.5.2.2.1.2.5 | Coding and Unit Testing Modifying the IP address white list of an RDS instance |  | 40h | 2017-04-05 | 2017-04-11 | 120 | 0d |  | Harshal W; Trupti G | 80h |
| 120 | 1.5.2.2.1.2.6 | Coding and Unit Testing Switching between the primary and standby databases of an RDS instance |  | 24h | 2017-03-31 | 2017-04-04 | 121 | 0d |  | Trupti G | 24h |
| 121 | 1.5.2.2.1.2.7 | Coding and Unit Testing Creating an RDS read-only instance |  | 32h | 2017-03-27 | 2017-03-30 | 117 | 0d |  | Trupti G | 32h |
| 122 | 1.5.2.2.1.3 | **Testing, Bug fixing and stabalization** |  | 5d | 2017-04-11 | 2017-04-17 |  | 0d |  |  | 104h |
| 123 | 1.5.2.2.1.3.1 | Drop 8 Creating Playbooks and testing RDS instance management |  | 40h | 2017-04-11 | 2017-04-17 | 114FF+32h | 0d |  | Sneha C | 40h |
| 124 | 1.5.2.2.1.3.2 | Drop 8 RDS instance management Bug fixing and stabalization |  | 32h | 2017-04-12 | 2017-04-17 | 123FF | 0d |  | Harshal W; Trupti G | 64h |
| 125 | 1.5.2.2.2 | **Drop 9 - Database management** |  | 8d | 2017-03-06 | 2017-03-15 |  | 3d |  |  | 176h |
| 126 | 1.5.2.2.2.1 | Database management Test Cases Creation |  | 24h | 2017-03-06 | 2017-03-08 | 96 | 28d |  | Sachin J | 24h |
| 127 | 1.5.2.2.2.2 | **Implementation** |  | 5d | 2017-03-06 | 2017-03-10 |  | 3d | 0d |  | 72h |
| 128 | 1.5.2.2.2.2.1 | Coding and Unit Testing Creating a database |  | 40h | 2017-03-06 | 2017-03-10 | 96 | 3d |  | Gaurav D | 40h |
| 129 | 1.5.2.2.2.2.2 | Coding and Unit Testing Deleting a database |  | 32h | 2017-03-06 | 2017-03-09 | 96 | 4d |  | Prasanna J | 32h |

| ID | WBS | Task | Type | Duration | Start | Finish | Predecessors | Total slack | Free slack | Resources | Work |
| --- | --- | --- | --- | --- | --- | --- | --- | --- | --- | --- | --- |
| 130 | 1.5.2.2.2.3 | **Testing, Bug fixing and stabalization** |  | 4d | 2017-03-10 | 2017-03-15 |  | 3d |  |  | 80h |
| 131 | 1.5.2.2.2.3.1 | Drop 9 - Creating Playbooks and testing Database management |  | 32h | 2017-03-10 | 2017-03-15 | 127FF+24h | 3d | 0d | Sachin J | 32h |
| 132 | 1.5.2.2.2.3.2 | Drop 9 - Database management Bug fixing and stabalization |  | 24h | 2017-03-13 | 2017-03-15 | 131FF | 3d | 0d | Gaurav D; Prasanna J | 48h |
| 133 | 1.5.2.2.3 | **Drop 10 - Account management** |  | 20d | 2017-03-16 | 2017-04-12 |  | 3d |  |  | 320h |
| 134 | 1.5.2.2.3.1 | Account management Test Cases Creation |  | 40h | 2017-03-16 | 2017-03-22 | 132 | 18d |  | Sachin J | 40h |
| 135 | 1.5.2.2.3.2 | **Implementation** |  | 11d | 2017-03-16 | 2017-03-30 |  | 3d | 0d |  | 176h |
| 136 | 1.5.2.2.3.2.1 | Coding and Unit Testing Creating an account |  | 32h | 2017-03-16 | 2017-03-21 | 132 | 3d | 0d | Gaurav D | 32h |
| 137 | 1.5.2.2.3.2.2 | Coding and Unit Testing Deleting an account |  | 24h | 2017-03-22 | 2017-03-24 | 136 | 3d | 0d | Gaurav D | 24h |
| 138 | 1.5.2.2.3.2.3 | Coding and Unit Testing Granting account permissions |  | 32h | 2017-03-16 | 2017-03-21 | 132 | 3d | 0d | Prasanna J | 32h |
| 139 | 1.5.2.2.3.2.4 | Coding and Unit Testing Revoking account permissions |  | 24h | 2017-03-22 | 2017-03-24 | 138 | 3d | 0d | Prasanna J | 24h |
| 140 | 1.5.2.2.3.2.5 | Coding and Unit Testing Resetting the instance password |  | 32h | 2017-03-27 | 2017-03-30 | 137 | 3d |  | Gaurav D | 32h |
| 141 | 1.5.2.2.3.2.6 | Coding and Unit Testing Resetting an account |  | 32h | 2017-03-27 | 2017-03-30 | 139 | 3d |  | Prasanna J | 32h |
| 142 | 1.5.2.2.3.3 | **Testing, Bug fixing and stabalization** |  | 5d | 2017-04-06 | 2017-04-12 |  | 3d |  |  | 104h |
| 143 | 1.5.2.2.3.3.1 | Drop 10 - Creating Playbooks and testing Account management |  | 40h | 2017-04-06 | 2017-04-12 | 135FS+32h | 3d | 0d | Sachin J | 40h |
| 144 | 1.5.2.2.3.3.2 | Drop 10 - Account management Bug fixing and stabalization |  | 32h | 2017-04-07 | 2017-04-12 | 143FF | 3d |  | Gaurav D; Prasanna J | 64h |
| 145 | 1.5.2.2.4 | Create help document |  | 24h | 2017-04-18 | 2017-04-20 | 112, 125, 133 | 0d |  | Gaurav D; Prasanna J | 48h |
| 146 | 1.5.2.2.5 | Relational Database Service Related Interfaces Close | milestone | 0h | 2017-04-20 | 2017-04-20 | 145 | 0d |  |  |  |
| 147 | 1.5.2.3 | Milestone 2 – OSS, RDS module Release | milestone | 0h | 2017-04-20 | 2017-04-20 | 146 | 0d |  |  |  |
| 148 | 1.5.2.4 | UAT OSS, RDS module Release |  | 40h | 2017-04-21 | 2017-04-27 | 147 | 0d |  | Aliyun Team | 40h |
| 149 | 1.6 | **Close** |  | 6d | 2017-04-27 | 2017-05-05 |  | 0d |  |  | 88h |
| 150 | 1.6.1 | Release Final Package - ECS-Security Group, SLB, VPC, OSS, RDS | milestone | 0h | 2017-04-27 | 2017-04-27 | 148 | 5d |  |  |  |
| 151 | 1.6.2 | User Guide + Deployment Guide + Code Merge |  | 48h | 2017-04-28 | 2017-05-05 | 148 | 0d |  | Harshal W | 48h |
| 152 | 1.6.3 | UAT Fixing, testing and post release support |  | 40h | 2017-04-28 | 2017-05-04 | 148 | 1d | 0d | Prasanna J | 40h |
| 153 | 1.6.4 | Delivering User Guide and Deployment Guide, Sign-Off | milestone | 0h | 2017-05-04 | 2017-05-04 | 152 | 1d |  |  |  |
